# NeuGantt

Schedule from MS Project, 2016-08-30 to 2016-09-30.

## Calendars

- Standard: Mon-Fri 08:00-12:00, 13:00-17:00; Sat-Sun off.

## Resources

| Resource |
| --- |
| LN |
| SS |

## Schedule

| ID | WBS | Task | Duration | Start | Finish | Predecessors | Baseline start | Baseline finish | Baseline duration | Total slack | Free slack | Constraint | Resources | Work |
| --- | --- | --- | --- | --- | --- | --- | --- | --- | --- | --- | --- | --- | --- | --- |
| 1 | 1 | **Workshop** | 23d | 2016-08-30 08:00 | 2016-09-29 17:00 |  | 2016-08-30 08:00 | 2016-09-29 17:00 | 23d | 0.5d |  |  |  | 108h |
| 2 | 1.1 | Workshop 1 | 1d | 2016-08-30 08:00 | 2016-08-30 17:00 |  | 2016-08-30 08:00 | 2016-08-30 17:00 | 1d | 3.81d | 0d |  | LN; SS | 7h |
| 3 | 1.2 | Workshop 2 | 1d | 2016-09-01 08:00 | 2016-09-01 17:00 |  | 2016-09-01 08:00 | 2016-09-01 17:00 | 1d | 20.5d |  | start no earlier than 2016-09-01 08:00 | LN; SS | 16h |
| 4 | 1.3 | Workshop 3 | 1d | 2016-09-08 08:00 | 2016-09-08 17:00 |  | 2016-09-08 08:00 | 2016-09-08 17:00 | 1d | 2.69d | 0d | start no earlier than 2016-09-08 08:00 | LN; SS | 16h |
| 5 | 1.4 | Workshop 4 | 1d | 2016-09-13 08:00 | 2016-09-13 17:00 |  | 2016-09-13 08:00 | 2016-09-13 17:00 | 1d | 12.5d |  | start no earlier than 2016-09-13 08:00 | LN; SS | 7h |
| 6 | 1.5 | Workshop 5 | 1d | 2016-09-15 08:00 | 2016-09-15 17:00 |  | 2016-09-15 08:00 | 2016-09-15 17:00 | 1d | 0d |  | start no earlier than 2016-09-15 08:00 | LN; SS | 16h |
| 7 | 1.6 | Workshop 6 | 1d | 2016-09-20 08:00 | 2016-09-20 17:00 |  | 2016-09-20 08:00 | 2016-09-20 17:00 | 1d | 7.5d |  | start no earlier than 2016-09-20 08:00 | LN; SS | 7h |
| 8 | 1.7 | Workshop 7 | 1d | 2016-09-22 08:00 | 2016-09-22 17:00 |  | 2016-09-22 08:00 | 2016-09-22 17:00 | 1d | -1d | 0d | start no earlier than 2016-09-22 08:00 | LN; SS | 16h |
| 9 | 1.8 | Workshop 8 | 1d | 2016-09-27 08:00 | 2016-09-27 17:00 |  | 2016-09-27 08:00 | 2016-09-27 17:00 | 1d | 2.5d |  | start no earlier than 2016-09-27 08:00 | LN; SS | 7h |
| 10 | 1.9 | Workshop 9 | 1d | 2016-09-29 08:00 | 2016-09-29 17:00 |  | 2016-09-29 08:00 | 2016-09-29 17:00 | 1d | 0.5d |  | start no earlier than 2016-09-29 08:00 | LN; SS | 16h |
| 11 | 2 | **Vorbereitung** | 3.56d | 2016-08-30 11:30 | 2016-09-02 17:00 |  | 2016-08-30 11:30 | 2016-09-02 17:00 | 3.56d | 3.81d |  |  |  | 31h |
| 12 | 2.1 | Idee | 0.25d | 2016-08-30 11:30 | 2016-08-30 14:30 | 2SS+3.5h | 2016-08-30 11:30 | 2016-08-30 14:30 | 0.25d | 3.81d | 0d |  | LN; SS | 4h |
| 13 | 2.2 | Ideensammlung | 0.38d | 2016-08-30 14:30 | 2016-08-31 08:30 | 12 | 2016-08-30 14:30 | 2016-08-31 08:30 | 0.38d | 3.81d | 0d |  | LN; SS | 6h |
| 14 | 2.3 | Besprechen der Ideen | 0.12d | 2016-08-31 08:30 | 2016-08-31 09:30 | 13 | 2016-08-31 08:30 | 2016-08-31 09:30 | 0.12d | 3.81d | 0d |  | LN; SS | 2h |
| 15 | 2.4 | Recherche über KanBan | 0.38d | 2016-08-31 09:30 | 2016-08-31 13:30 | 14 | 2016-08-31 09:30 | 2016-08-31 13:30 | 0.38d | 3.81d | 0d |  | LN; SS | 4h |
| 16 | 2.5 | **Recherche über Technologien** | 2.44d | 2016-08-31 13:30 | 2016-09-02 17:00 |  | 2016-08-31 13:30 | 2016-09-02 17:00 | 2.44d | 3.81d |  |  |  | 15h |
| 17 | 2.5.1 | UWP | 1.44d | 2016-08-31 13:30 | 2016-09-02 17:00 | 15 | 2016-08-31 13:30 | 2016-09-02 17:00 | 1.44d | 3.81d | 0d |  | SS; LN | 5h |
| 18 | 2.5.2 | .NET Core | 1.44d | 2016-08-31 13:30 | 2016-09-02 17:00 | 15 | 2016-08-31 13:30 | 2016-09-02 17:00 | 1.44d | 3.81d | 0d |  | LN; SS | 5h |
| 19 | 2.5.3 | SQLite | 1.44d | 2016-08-31 13:30 | 2016-09-02 17:00 | 15 | 2016-08-31 13:30 | 2016-09-02 17:00 | 1.44d | 3.81d | 0d |  | LN; SS | 5h |
| 20 | 3 | **Meeting** | 16.25d | 2016-09-06 08:00 | 2016-09-28 10:00 |  | 2016-09-06 08:00 | 2016-09-28 10:00 | 16.25d | 2.25d |  |  |  | 16h |
| 21 | 3.1 | Meeting 0 | 1d | 2016-09-06 08:00 | 2016-09-06 17:00 |  | 2016-09-06 08:00 | 2016-09-06 17:00 | 1d | 2.56d | 0d | start no earlier than 2016-09-06 08:00 | LN; SS | 4h |
| 22 | 3.2 | Meeting 1 | 2h | 2016-09-14 08:00 | 2016-09-14 10:00 |  | 2016-09-14 08:00 | 2016-09-14 10:00 | 2h | 12.25d |  | start no earlier than 2016-09-14 08:00 | LN; SS | 4h |
| 23 | 3.3 | Meeting 2 | 2h | 2016-09-21 08:00 | 2016-09-21 10:00 |  | 2016-09-21 08:00 | 2016-09-21 10:00 | 2h | 7.25d |  | start no earlier than 2016-09-21 08:00 | LN; SS | 4h |
| 24 | 3.4 | Meeting 3 | 2h | 2016-09-28 08:00 | 2016-09-28 10:00 |  | 2016-09-28 08:00 | 2016-09-28 10:00 | 2h | 2.25d |  | start no earlier than 2016-09-28 08:00 | LN; SS | 4h |

| ID | WBS | Task | Duration | Start | Finish | Predecessors | Baseline start | Baseline finish | Baseline duration | Total slack | Free slack | Resources | Work |
| --- | --- | --- | --- | --- | --- | --- | --- | --- | --- | --- | --- | --- | --- |
| 25 | 4 | **Organisatorisches** | 2.88d | 2016-09-05 08:00 | 2016-09-07 16:00 |  | 2016-09-05 08:00 | 2016-09-07 16:00 | 2.88d | 2.56d |  |  | 20h |
| 26 | 4.1 | PSP erstellen | 0.75d | 2016-09-05 08:00 | 2016-09-05 15:00 | 19, 17, 18 | 2016-09-05 08:00 | 2016-09-05 15:00 | 0.75d | 3.81d | 1.25d | LN; SS | 8h |
| 27 | 4.2 | Beschreibung der Arbeitspakete | 0.5d | 2016-09-07 08:00 | 2016-09-07 12:00 | 26, 21 | 2016-09-07 08:00 | 2016-09-07 12:00 | 0.5d | 2.56d | 0d | LN; SS | 8h |
| 28 | 4.3 | Zeitplan erstellen | 0.12d | 2016-09-07 13:00 | 2016-09-07 14:00 | 27 | 2016-09-07 13:00 | 2016-09-07 14:00 | 0.12d | 2.56d | 0d | LN; SS | 2h |
| 29 | 4.4 | Projektdefinition schreiben | 0.25d | 2016-09-07 14:00 | 2016-09-07 16:00 | 28 | 2016-09-07 14:00 | 2016-09-07 16:00 | 0.25d | 2.56d | 0d | LN | 2h |
| 30 | 5 | **Entwurf** | 2.62d | 2016-09-07 14:00 | 2016-09-12 10:00 |  | 2016-09-07 14:00 | 2016-09-12 10:00 | 2.62d | 2.56d |  |  | 7h |
| 31 | 5.1 | Programmablauf beschreiben | 1.12d | 2016-09-07 16:00 | 2016-09-09 17:00 | 29 | 2016-09-07 16:00 | 2016-09-09 17:00 | 1.12d | 2.56d | 0d | LN | 3h |
| 32 | 5.2 | Grobe Skizzen von UI anfertigen | 0.25d | 2016-09-07 14:00 | 2016-09-07 16:00 | 28 | 2016-09-07 14:00 | 2016-09-07 16:00 | 0.25d | 3.69d | 0d | SS | 2h |
| 33 | 5.3 | Datenmodell erstellen | 0.25d | 2016-09-12 08:00 | 2016-09-12 10:00 | 31 | 2016-09-12 08:00 | 2016-09-12 10:00 | 0.25d | 2.56d | 0d | LN | 2h |
| 34 | 6 | **Konzeption** | 2.44d? | 2016-09-07 16:00 | 2016-09-12 10:30 |  | 2016-09-07 16:00 | 2016-09-12 10:30 | 2.44d? | 2.56d |  |  | 11h |
| 35 | 6.1 | **Skizzen erstellen** | 2.12d? | 2016-09-07 16:00 | 2016-09-09 17:00 |  | 2016-09-07 16:00 | 2016-09-09 17:00 | 2.12d? | 2.69d |  |  | 9h |
| 36 | 6.1.1 | Anmeldebildschirm | 0.12d? | 2016-09-07 16:00 | 2016-09-07 17:00 | 32 | 2016-09-07 16:00 | 2016-09-07 17:00 | 0.12d? | 3.69d | 1d | SS | 1h |
| 37 | 6.1.2 | Registrierungsbildschirm | 0.12d? | 2016-09-09 08:00 | 2016-09-09 09:00 | 36, 4 | 2016-09-09 08:00 | 2016-09-09 09:00 | 0.12d? | 2.69d | 0d | SS | 1h |
| 38 | 6.1.3 | Hauptmaske | 0.12d? | 2016-09-09 09:00 | 2016-09-09 10:00 | 37 | 2016-09-09 09:00 | 2016-09-09 10:00 | 0.12d? | 2.69d | 0d | SS | 1h |
| 39 | 6.1.4 | Teamverwaltungsansicht | 0.12d? | 2016-09-09 10:00 | 2016-09-09 11:00 | 38 | 2016-09-09 10:00 | 2016-09-09 11:00 | 0.12d? | 2.69d | 0d | SS | 1h |
| 40 | 6.1.5 | Board-Einstellungen(Gruppenleiter) | 0.12d? | 2016-09-09 11:00 | 2016-09-09 12:00 | 39 | 2016-09-09 11:00 | 2016-09-09 12:00 | 0.12d? | 2.69d | 0d | SS | 1h |
| 41 | 6.1.6 | To-Do-Ansicht | 0.12d? | 2016-09-09 13:00 | 2016-09-09 14:00 | 40 | 2016-09-09 13:00 | 2016-09-09 14:00 | 0.12d? | 2.69d | 0d | SS | 1h |
| 42 | 6.1.7 | In-Progress-Ansicht | 0.12d? | 2016-09-09 14:00 | 2016-09-09 15:00 | 41 | 2016-09-09 14:00 | 2016-09-09 15:00 | 0.12d? | 2.69d | 0d | SS | 1h |
| 43 | 6.1.8 | Done-Ansicht | 0.12d? | 2016-09-09 15:00 | 2016-09-09 16:00 | 42 | 2016-09-09 15:00 | 2016-09-09 16:00 | 0.12d? | 2.69d | 0d | SS | 1h |
| 44 | 6.1.9 | Einzel Ticket-Ansicht | 0.12d | 2016-09-09 16:00 | 2016-09-09 17:00 | 43 | 2016-09-09 16:00 | 2016-09-09 17:00 | 0.12d | 2.69d | 0d | SS | 1h |
| 45 | 6.2 | **Standards festlegen** | 0.31d? | 2016-09-12 08:00 | 2016-09-12 10:30 |  | 2016-09-12 08:00 | 2016-09-12 10:30 | 0.31d? | 2.56d |  |  | 2h |
| 46 | 6.2.1 | GUI Farben | 0.06d? | 2016-09-12 08:00 | 2016-09-12 08:30 | 44 | 2016-09-12 08:00 | 2016-09-12 08:30 | 0.06d? | 2.69d | 0d | SS | 0.5h |
| 47 | 6.2.2 | Codestandards | 0.06d? | 2016-09-12 08:30 | 2016-09-12 09:00 | 46 | 2016-09-12 08:30 | 2016-09-12 09:00 | 0.06d? | 2.69d | 0.12d | LN | 0.5h |
| 48 | 6.2.3 | Verwendete Technologien | 0.06d? | 2016-09-12 10:00 | 2016-09-12 10:30 | 47, 33 | 2016-09-12 10:00 | 2016-09-12 10:30 | 0.06d? | 2.56d | 1.69d | LN; SS | 1h |

| ID | WBS | Task | Type | Duration | Start | Finish | Predecessors | Baseline start | Baseline finish | Baseline duration | Total slack | Free slack | Constraint | Resources | Work |
| --- | --- | --- | --- | --- | --- | --- | --- | --- | --- | --- | --- | --- | --- | --- | --- |
| 49 | 7 | **Realisierung** |  | 11d? | 2016-09-14 08:00 | 2016-09-28 17:00 |  | 2016-09-14 08:00 | 2016-09-28 17:00 | 11d? | -1d | 0d |  |  | 89h |
| 50 | 7.1 | Beginn Realisierung | milestone | 0d | 2016-09-14 08:00 | 2016-09-14 08:00 | 48 | 2016-09-14 08:00 | 2016-09-14 08:00 | 0d | 0.88d | 0d | start no earlier than 2016-09-14 08:00 |  |  |
| 51 | 7.2 | **Frontend implementieren** |  | 11d? | 2016-09-14 08:00 | 2016-09-28 17:00 |  | 2016-09-14 08:00 | 2016-09-28 17:00 | 11d? | -1d | 0d |  |  | 51h |
| 52 | 7.2.1 | Anmeldebildschirm |  | 0.19d? | 2016-09-14 08:00 | 2016-09-14 09:30 | 50 | 2016-09-14 08:00 | 2016-09-14 09:30 | 0.19d? | 1.44d | 0d |  | SS | 1.5h |
| 53 | 7.2.2 | Anmeldebildschirm Logik |  | 0.38d? | 2016-09-14 09:30 | 2016-09-14 13:30 | 52 | 2016-09-14 09:30 | 2016-09-14 13:30 | 0.38d? | 1.44d |  |  | SS | 3h |
| 54 | 7.2.3 | Registrierungsbildschirm |  | 0.19d? | 2016-09-16 08:00 | 2016-09-16 09:30 | 53, 6 | 2016-09-16 08:00 | 2016-09-16 09:30 | 0.19d? | 0d |  |  | SS | 1.5h |
| 55 | 7.2.4 | Registrierungsbildschirm Logik |  | 0.25d? | 2016-09-16 09:30 | 2016-09-16 11:30 | 54 | 2016-09-16 09:30 | 2016-09-16 11:30 | 0.25d? | 0d |  |  | SS | 2h |
| 56 | 7.2.5 | Hauptmaske |  | 0.25d? | 2016-09-16 11:30 | 2016-09-16 14:30 | 55 | 2016-09-16 11:30 | 2016-09-16 14:30 | 0.25d? | 0d |  |  | SS | 2h |
| 57 | 7.2.6 | Hauptmaske Logik |  | 0.5d? | 2016-09-16 14:30 | 2016-09-19 09:30 | 56 | 2016-09-16 14:30 | 2016-09-19 09:30 | 0.5d? | 0d |  |  | SS | 4h |
| 58 | 7.2.7 | Teamverwaltungsansicht |  | 0.5d? | 2016-09-19 09:30 | 2016-09-19 14:30 | 57 | 2016-09-19 09:30 | 2016-09-19 14:30 | 0.5d? | 0d |  |  | SS | 4h |
| 59 | 7.2.8 | Teamverwaltungsansicht Logik |  | 0.75d? | 2016-09-19 14:30 | 2016-09-20 11:30 | 58 | 2016-09-19 14:30 | 2016-09-20 11:30 | 0.75d? | 0d |  |  | SS | 6h |
| 60 | 7.2.9 | Board-Einstellungen |  | 1.56d? | 2016-09-20 11:30 | 2016-09-21 17:00 | 59 | 2016-09-20 11:30 | 2016-09-21 17:00 | 1.56d? | 0d |  |  | SS | 2h |
| 61 | 7.2.10 | Board-Einstellungen Logik |  | 0.25d? | 2016-09-23 08:00 | 2016-09-23 10:00 | 60, 8 | 2016-09-23 08:00 | 2016-09-23 10:00 | 0.25d? | -1d | 0d |  | SS | 2h |
| 62 | 7.2.11 | To-Do-Ansicht |  | 0.25d? | 2016-09-23 10:00 | 2016-09-23 12:00 | 61 | 2016-09-23 10:00 | 2016-09-23 12:00 | 0.25d? | -1d | 0d |  | SS | 2h |
| 63 | 7.2.12 | To-Do-Ansicht Logik |  | 0.38d? | 2016-09-23 13:00 | 2016-09-23 16:00 | 62 | 2016-09-23 13:00 | 2016-09-23 16:00 | 0.38d? | -1d | 0d |  | SS | 3h |
| 64 | 7.2.13 | In-Progress-Ansicht |  | 0.25d? | 2016-09-23 16:00 | 2016-09-26 09:00 | 63 | 2016-09-23 16:00 | 2016-09-26 09:00 | 0.25d? | -1d | 0d |  | SS | 2h |
| 65 | 7.2.14 | In-Progress-Ansicht Logik |  | 0.38d? | 2016-09-26 09:00 | 2016-09-26 12:00 | 64 | 2016-09-26 09:00 | 2016-09-26 12:00 | 0.38d? | -1d | 0d |  | SS | 3h |
| 66 | 7.2.15 | Done-Ansicht |  | 0.12d? | 2016-09-26 13:00 | 2016-09-26 14:00 | 65 | 2016-09-26 13:00 | 2016-09-26 14:00 | 0.12d? | -1d | 0d |  | SS | 1h |
| 67 | 7.2.16 | Done-Ansicht Logik |  | 0.25d? | 2016-09-26 14:00 | 2016-09-26 16:00 | 66 | 2016-09-26 14:00 | 2016-09-26 16:00 | 0.25d? | -1d | 0d |  | SS | 2h |
| 68 | 7.2.17 | Einzel Ticket-Ansicht |  | 0.5d | 2016-09-26 16:00 | 2016-09-27 11:00 | 67 | 2016-09-26 16:00 | 2016-09-27 11:00 | 0.5d | -1d | 0d |  | SS | 4h |
| 69 | 7.2.18 | Einzel Ticket-Ansicht Logik |  | 1.62d | 2016-09-27 11:00 | 2016-09-28 17:00 | 68 | 2016-09-27 11:00 | 2016-09-28 17:00 | 1.62d | -1d | 0d |  | SS | 6h |
| 70 | 7.3 | **Backend implementieren** |  | 9d? | 2016-09-14 08:00 | 2016-09-26 17:00 |  | 2016-09-14 08:00 | 2016-09-26 17:00 | 9d? | 0.88d |  |  |  | 38h |
| 71 | 7.3.1 | Datenbankmodell umsetzen |  | 0.25d? | 2016-09-14 08:00 | 2016-09-14 10:00 | 50 | 2016-09-14 08:00 | 2016-09-14 10:00 | 0.25d? | 0.88d | 0d |  | LN | 2h |
| 72 | 7.3.2 | Entity Framework umsetzen |  | 1.75d? | 2016-09-14 10:00 | 2016-09-16 17:00 | 71 | 2016-09-14 10:00 | 2016-09-16 17:00 | 1.75d? | 0.88d | 0d |  | LN | 6h |
| 73 | 7.3.3 | Routen implementieren |  | 5d | 2016-09-19 08:00 | 2016-09-26 17:00 | 72 | 2016-09-19 08:00 | 2016-09-26 17:00 | 5d | 0.88d | 0d |  | LN | 30h |

| ID | WBS | Task | Type | Duration | Start | Finish | Predecessors | Baseline start | Baseline finish | Baseline duration | Total slack | Free slack | Constraint | Resources | Work |
| --- | --- | --- | --- | --- | --- | --- | --- | --- | --- | --- | --- | --- | --- | --- | --- |
| 74 | 8 | **Assets** |  | 0.12d | 2016-09-27 08:00 | 2016-09-27 09:00 |  | 2016-09-27 08:00 | 2016-09-27 09:00 | 0.12d | 0.88d |  |  |  | 1h |
| 75 | 8.1 | Logo erstellen/besorgen |  | 0.12d | 2016-09-27 08:00 | 2016-09-27 09:00 | 73 | 2016-09-27 08:00 | 2016-09-27 09:00 | 0.12d | 0.88d |  |  | LN | 1h |
| 76 | 9 | **Präsentation** |  | 2.5d? | 2016-09-28 08:00 | 2016-09-30 12:00 |  | 2016-09-28 08:00 | 2016-09-30 12:00 | 2.5d? | 0d |  |  |  | 14h |
| 77 | 9.1 | Präsentation erstellen |  | 1d? | 2016-09-28 08:00 | 2016-09-28 17:00 | 69, 75 | 2016-09-28 08:00 | 2016-09-28 17:00 | 1d? | -1d | 0d | start no later than 2016-09-28 08:00 | LN; SS | 6h |
| 78 | 9.2 | Präsentation halten |  | 0.5d | 2016-09-30 08:00 | 2016-09-30 12:00 | 77 | 2016-09-30 08:00 | 2016-09-30 12:00 | 0.5d | 0d |  | start no earlier than 2016-09-30 08:00 | LN; SS | 8h |
| 79 | 10 | Projekt Ende | milestone | 0d | 2016-09-30 08:00 | 2016-09-30 08:00 |  | 2016-09-30 08:00 | 2016-09-30 08:00 | 0d | 0.5d |  | start no earlier than 2016-09-30 08:00 |  |  |
